# Schedule_MyBomber_2.0

Schedule from MS Project, 2021-11-05 to 2022-01-24, costs in €, A marks actual dates.

## Calendars

- Standard: Mon-Fri 08:00-12:00, 13:00-17:00; Sat-Sun off.

## Resources

| Resource | Rate |
| --- | --- |
| Bonavita Vincenzo | 40 |
| D'Antuono Domenico | 40 |
| Palladino Antonio Salvatore | 40 |
| Viglione Maddalena | 40 |
| Vona Livio | 40 |
| Mauro Gaetano | 50 |

## Schedule

| ID | WBS | Task | Duration | Start | Finish | Predecessors | Complete | Actual finish | Baseline start | Baseline finish | Baseline duration | Baseline 1 start | Baseline 1 finish | Constraint | Resources | Work | Actual work | Cost | Baseline cost | Actual cost |
| --- | --- | --- | --- | --- | --- | --- | --- | --- | --- | --- | --- | --- | --- | --- | --- | --- | --- | --- | --- | --- |
| 1 | 1 | **MyBomber** | 57d | 2021-11-05 A | 2022-01-24 |  | 100% | 2022-01-21 | 2021-11-05 | 2022-01-21 | 56d | 2021-11-05 | 2022-01-24 |  |  | 239.5h | 239.5h | 9,980 | 10,000 | 9,980 |
| 2 | 1.1 | **RAD** | 15d | 2021-11-05 A | 2021-11-25 A |  | 100% |  | 2021-11-05 | 2021-11-25 | 15d | 2021-11-05 | 2021-11-25 |  |  | 41.5h | 41.5h | 1,660 | 1,660 | 1,660 |
| 3 | 1.1.1 | **RAD funzionale** | 9d | 2021-11-05 A | 2021-11-17 A |  | 100% |  | 2021-11-05 | 2021-11-17 | 9d | 2021-11-05 | 2021-11-17 |  |  | 25.5h | 25.5h | 1,020 | 1,020 | 1,020 |
| 4 | 1.1.1.1 | Introduzione | 3d | 2021-11-05 A | 2021-11-09 A |  | 100% |  | 2021-11-05 | 2021-11-09 | 3d | 2021-11-05 | 2021-11-09 | start no earlier than 2021-11-05 | Palladino Antonio Salvatore [4.3%]; Vona Livio [4.1%] | 2h | 2h | 80 | 80 | 80 |
| 5 | 1.1.1.2 | Sistema Corrente | 3d | 2021-11-05 A | 2021-11-09 A |  | 100% |  | 2021-11-05 | 2021-11-09 | 3d | 2021-11-05 | 2021-11-09 | start no earlier than 2021-11-05 | Bonavita Vincenzo [2.8%]; D'Antuono Domenico [2.8%]; Vona Livio [2.8%] | 2h | 2h | 80 | 80 | 80 |
| 6 | 1.1.1.3 | Sistema Proposto | 3d | 2021-11-05 A | 2021-11-09 A |  | 100% |  | 2021-11-05 | 2021-11-09 | 3d | 2021-11-05 | 2021-11-09 | start no earlier than 2021-11-05 | Bonavita Vincenzo [2.5%]; D'Antuono Domenico [2.5%]; Palladino Antonio Salvatore [2.5%]; Viglione Maddalena [2.5%]; Vona Livio [2.5%] | 3h | 3h | 120 | 120 | 120 |
| 7 | 1.1.1.4 | Requisiti Funzionali | 3d | 2021-11-10 A | 2021-11-12 A | 6 | 100% |  | 2021-11-10 | 2021-11-12 | 3d | 2021-11-10 | 2021-11-12 | start no earlier than 2021-11-05 | Bonavita Vincenzo [2.5%]; D'Antuono Domenico [2.5%]; Palladino Antonio Salvatore [2.5%]; Viglione Maddalena [2.5%]; Vona Livio [2.5%] | 3h | 3h | 120 | 120 | 120 |
| 8 | 1.1.1.5 | Requisiti Non Funzionali | 3d | 2021-11-10 A | 2021-11-12 A | 6 | 100% |  | 2021-11-10 | 2021-11-12 | 3d | 2021-11-10 | 2021-11-12 | start no earlier than 2021-11-08 | Bonavita Vincenzo [1.7%]; D'Antuono Domenico [1.7%]; Palladino Antonio Salvatore [1.7%]; Viglione Maddalena [1.7%]; Vona Livio [1.7%] | 2h | 2h | 80 | 80 | 80 |
| 9 | 1.1.1.6 | Scenari | 4d | 2021-11-10 A | 2021-11-15 A | 6 | 100% |  | 2021-11-10 | 2021-11-15 | 4d | 2021-11-10 | 2021-11-15 | finish no earlier than 2021-11-15 | Bonavita Vincenzo [2.2%]; D'Antuono Domenico [2.2%]; Palladino Antonio Salvatore [2.2%]; Viglione Maddalena [2.2%]; Vona Livio [2.2%] | 3.5h | 3.5h | 140 | 140 | 140 |
| 10 | 1.1.1.7 | Use Case | 3d | 2021-11-15 A | 2021-11-17 A | 7 | 100% |  | 2021-11-15 | 2021-11-17 | 3d | 2021-11-15 | 2021-11-17 | finish no earlier than 2021-11-15 | Bonavita Vincenzo [2.5%]; D'Antuono Domenico [2.5%]; Palladino Antonio Salvatore [2.5%]; Viglione Maddalena [2.5%]; Vona Livio [2.5%] | 3h | 3h | 120 | 120 | 120 |
| 11 | 1.1.1.8 | Use Case Diagram | 3d | 2021-11-15 A | 2021-11-17 A | 7 | 100% |  | 2021-11-15 | 2021-11-17 | 3d | 2021-11-15 | 2021-11-17 | finish no earlier than 2021-11-15 | Bonavita Vincenzo [2.1%]; D'Antuono Domenico [2.1%]; Palladino Antonio Salvatore [2.1%]; Viglione Maddalena [2.1%]; Vona Livio [2.1%] | 2.5h | 2.5h | 100 | 100 | 100 |
| 12 | 1.1.1.9 | Mock-up | 2d | 2021-11-15 A | 2021-11-16 A | 7 | 100% |  | 2021-11-15 | 2021-11-16 | 2d | 2021-11-15 | 2021-11-16 | finish no earlier than 2021-11-15 | Bonavita Vincenzo [3.8%]; D'Antuono Domenico [3.8%]; Palladino Antonio Salvatore [3.8%]; Viglione Maddalena [3.8%]; Vona Livio [3.8%] | 3h | 3h | 120 | 120 | 120 |
| 13 | 1.1.1.10 | User Stories | 2d | 2021-11-15 A | 2021-11-16 A | 7 | 100% |  | 2021-11-15 | 2021-11-16 | 2d | 2021-11-15 | 2021-11-16 | start no earlier than 2021-11-15 | Bonavita Vincenzo [1.9%]; D'Antuono Domenico [1.9%]; Palladino Antonio Salvatore [1.9%]; Viglione Maddalena [1.9%]; Vona Livio [1.9%] | 1.5h | 1.5h | 60 | 60 | 60 |
| 14 | 1.1.2 | **RAD completo** | 6d | 2021-11-18 A | 2021-11-25 A | 3 | 100% |  | 2021-11-18 | 2021-11-25 | 6d | 2021-11-18 | 2021-11-25 |  |  | 16h | 16h | 640 | 640 | 640 |
| 15 | 1.1.2.1 | Tabella degli oggetti | 2d | 2021-11-18 A | 2021-11-19 A |  | 100% |  | 2021-11-18 | 2021-11-19 | 2d | 2021-11-18 | 2021-11-19 | finish no earlier than 2021-11-16 | Bonavita Vincenzo [6.2%]; Vona Livio [6.2%] | 2h | 2h | 80 | 80 | 80 |
| 16 | 1.1.2.2 | Class Diagram | 3d | 2021-11-18 A | 2021-11-22 A |  | 100% |  | 2021-11-18 | 2021-11-22 | 3d | 2021-11-18 | 2021-11-22 | finish no earlier than 2021-11-19 | Palladino Antonio Salvatore [4.2%]; Viglione Maddalena [4.2%]; D'Antuono Domenico [4%] | 3h | 3h | 120 | 120 | 120 |
| 17 | 1.1.2.3 | Sequence Diagram | 4d | 2021-11-22 A | 2021-11-25 A | 15 | 100% |  | 2021-11-22 | 2021-11-25 | 4d | 2021-11-22 | 2021-11-25 | finish no earlier than 2021-11-24 | Bonavita Vincenzo [2.5%]; D'Antuono Domenico [2.5%]; Palladino Antonio Salvatore [2.5%]; Viglione Maddalena [2.5%]; Vona Livio [2.5%] | 4h | 4h | 160 | 160 | 160 |
| 18 | 1.1.2.4 | State Chart | 5d | 2021-11-18 A | 2021-11-24 A |  | 100% |  | 2021-11-18 | 2021-11-24 | 5d | 2021-11-18 | 2021-11-24 | finish no earlier than 2021-11-24 | Bonavita Vincenzo [1.5%]; D'Antuono Domenico [1.5%]; Palladino Antonio Salvatore [1.5%]; Viglione Maddalena [1.5%]; Vona Livio [1.5%] | 3h | 3h | 120 | 120 | 120 |
| 19 | 1.1.2.5 | Navigational path | 4d | 2021-11-19 A | 2021-11-24 A |  | 100% |  | 2021-11-19 | 2021-11-24 | 4d | 2021-11-19 | 2021-11-24 | start no earlier than 2021-11-19 | Bonavita Vincenzo [1.9%]; D'Antuono Domenico [1.9%]; Palladino Antonio Salvatore [1.9%]; Viglione Maddalena [1.9%]; Vona Livio [1.9%] | 3h | 3h | 120 | 120 | 120 |
| 20 | 1.1.2.6 | Glossario | 2d | 2021-11-18 A | 2021-11-19 A |  | 100% |  | 2021-11-18 | 2021-11-19 | 2d | 2021-11-18 | 2021-11-19 | start no earlier than 2021-11-18 | Palladino Antonio Salvatore [3.1%]; Viglione Maddalena [3.1%] | 1h | 1h | 40 | 40 | 40 |
| 21 | 1.2 | **SDD** | 8d | 2021-11-26 A | 2021-12-07 A | 14 | 100% |  | 2021-11-26 | 2021-12-07 | 8d | 2021-11-26 | 2021-12-07 |  |  | 23h | 23h | 920 | 920 | 920 |
| 22 | 1.2.1 | Introduzione | 2d | 2021-11-26 A | 2021-11-29 A |  | 100% |  | 2021-11-26 | 2021-11-29 | 2d | 2021-11-26 | 2021-11-29 | start no earlier than 2021-11-26 | Bonavita Vincenzo [3.8%]; D'Antuono Domenico [3.8%]; Palladino Antonio Salvatore [3.8%]; Viglione Maddalena [3.8%]; Vona Livio [3.8%] | 3h | 3h | 120 | 120 | 120 |
| 23 | 1.2.2 | Architettura sistema corrente | 1d | 2021-11-26 A | 2021-11-26 A |  | 100% |  | 2021-11-26 | 2021-11-26 | 1d | 2021-11-26 | 2021-11-26 |  |  |  |  |  |  |  |
| 24 | 1.2.3 | Architettura sistema proposto | 4d | 2021-11-26 A | 2021-12-01 A |  | 100% |  | 2021-11-26 | 2021-12-01 | 4d | 2021-11-26 | 2021-12-01 |  | Viglione Maddalena [3.1%] | 1h | 1h | 40 | 40 | 40 |
| 25 | 1.2.4 | Decomposizione in sottosistemi | 2.5d | 2021-11-26 A | 2021-11-30 A |  | 100% |  | 2021-11-26 | 2021-11-30 | 2.5d | 2021-11-26 | 2021-11-30 |  | Bonavita Vincenzo [5%]; D'Antuono Domenico [5%]; Palladino Antonio Salvatore [5%]; Viglione Maddalena [5%]; Vona Livio [5%] | 5h | 5h | 200 | 200 | 200 |
| 26 | 1.2.5 | Mapping Hardware/Software | 3d | 2021-11-30 A | 2021-12-03 A | 25 | 100% |  | 2021-11-30 | 2021-12-03 | 3d | 2021-11-30 | 2021-12-03 |  | D'Antuono Domenico [5.6%]; Viglione Maddalena [5.6%]; Vona Livio [5.6%] | 4h | 4h | 160 | 160 | 160 |
| 27 | 1.2.6 | Gestione dati persistenti | 6d | 2021-11-26 A | 2021-12-03 A |  | 100% |  | 2021-11-26 | 2021-12-03 | 6d | 2021-11-26 | 2021-12-03 |  | Bonavita Vincenzo [2.1%]; Vona Livio [2.1%] | 2h | 2h | 80 | 80 | 80 |
| 28 | 1.2.7 | Controllo accessi e sicurezza | 8d | 2021-11-26 A | 2021-12-07 A |  | 100% |  | 2021-11-26 | 2021-12-07 | 8d | 2021-11-26 | 2021-12-07 |  | D'Antuono Domenico [0.8%]; Palladino Antonio Salvatore [0.8%]; Vona Livio [0.8%] | 1.5h | 1.5h | 60 | 60 | 60 |
| 29 | 1.2.8 | Controllo flusso globale del sistema | 8d | 2021-11-26 A | 2021-12-07 A |  | 100% |  | 2021-11-26 | 2021-12-07 | 8d | 2021-11-26 | 2021-12-07 |  | D'Antuono Domenico [0.5%]; Palladino Antonio Salvatore [0.5%]; Vona Livio [0.5%] | 1h | 1h | 40 | 40 | 40 |
| 30 | 1.2.9 | Condizioni limite | 8d | 2021-11-26 A | 2021-12-07 A |  | 100% |  | 2021-11-26 | 2021-12-07 | 8d | 2021-11-26 | 2021-12-07 |  | D'Antuono Domenico [1.3%]; Palladino Antonio Salvatore [1.3%]; Vona Livio [1.3%] | 2.5h | 2.5h | 100 | 100 | 100 |
| 31 | 1.2.10 | Servizi dei sottosistemi | 5d | 2021-11-30 A | 2021-12-07 A | 25 | 100% |  | 2021-11-30 | 2021-12-07 | 5d | 2021-11-30 | 2021-12-07 |  | Bonavita Vincenzo [3.8%]; Viglione Maddalena [3.8%] | 3h | 3h | 120 | 120 | 120 |

| ID | WBS | Task | Duration | Start | Finish | Predecessors | Complete | Baseline start | Baseline finish | Baseline duration | Baseline 1 start | Baseline 1 finish | Constraint | Resources | Work | Actual work | Cost | Baseline cost | Actual cost |
| --- | --- | --- | --- | --- | --- | --- | --- | --- | --- | --- | --- | --- | --- | --- | --- | --- | --- | --- | --- |
| 32 | 1.3 | **ODD** | 11d | 2021-12-08 A | 2021-12-22 A | 21 | 100% | 2021-12-08 | 2021-12-22 | 11d | 2021-12-08 | 2021-12-22 |  |  | 20h | 20h | 800 | 980 | 800 |
| 33 | 1.3.1 | Introduzione | 4d | 2021-12-08 A | 2021-12-13 A |  | 100% | 2021-12-08 | 2021-12-13 | 4d | 2021-12-08 | 2021-12-13 |  | Bonavita Vincenzo [0.1%]; Viglione Maddalena [1.5%] | 0.5h | 0.5h | 20 | 20 | 20 |
| 34 | 1.3.2 | Object Design trade-offs | 4d | 2021-12-08 A | 2021-12-13 A |  | 100% | 2021-12-08 | 2021-12-13 | 4d | 2021-12-08 | 2021-12-13 |  | Viglione Maddalena [3.1%]; D'Antuono Domenico [3.1%]; Palladino Antonio Salvatore [3.1%] | 3h | 3h | 120 | 120 | 120 |
| 35 | 1.3.3 | Componenti off-the-shelf | 4d | 2021-12-08 A | 2021-12-13 A |  | 100% | 2021-12-08 | 2021-12-13 | 4d | 2021-12-08 | 2021-12-13 |  | Bonavita Vincenzo [4.7%] | 1.5h | 1.5h | 60 | 120 | 60 |
| 36 | 1.3.4 | Linee Guida documentazione interfacce | 4d | 2021-12-08 A | 2021-12-13 A |  | 100% | 2021-12-08 | 2021-12-13 | 4d | 2021-12-08 | 2021-12-13 |  | D'Antuono Domenico [4.7%]; Palladino Antonio Salvatore [4.7%] | 3h | 3h | 120 | 120 | 120 |
| 37 | 1.3.5 | Packages | 7d | 2021-12-08 A | 2021-12-16 A |  | 100% | 2021-12-08 | 2021-12-16 | 7d | 2021-12-08 | 2021-12-16 |  | Viglione Maddalena [3.6%]; Bonavita Vincenzo [3.6%] | 4h | 4h | 160 | 200 | 160 |
| 38 | 1.3.6 | Class Interfaces | 3d | 2021-12-17 A | 2021-12-21 A | 37 | 100% | 2021-12-17 | 2021-12-21 | 3d | 2021-12-17 | 2021-12-21 |  | D'Antuono Domenico [6.2%]; Palladino Antonio Salvatore [6.2%] | 3h | 3h | 120 | 160 | 120 |
| 39 | 1.3.7 | Design pattern | 11d | 2021-12-08 A | 2021-12-22 A |  | 100% | 2021-12-08 | 2021-12-22 | 11d | 2021-12-08 | 2021-12-22 |  | Bonavita Vincenzo [1.4%]; D'Antuono Domenico [1.4%]; Palladino Antonio Salvatore [1.4%]; Viglione Maddalena [1.4%] | 5h | 5h | 200 | 240 | 200 |
| 40 | 1.4 | **Implementazione** | 10d | 2021-12-23 A | 2022-01-05 A | 32 | 100% | 2021-12-23 | 2022-01-05 | 10d | 2021-12-23 | 2022-01-05 |  |  | 80h | 80h | 3,200 | 3,400 | 3,200 |
| 41 | 1.4.1 | Gestione dati persistenti | 6d | 2021-12-23 A | 2021-12-30 A |  | 100% | 2021-12-23 | 2022-01-05 | 10d | 2021-12-23 | 2022-01-05 | finish no earlier than 2021-12-30 | Bonavita Vincenzo [9.4%]; D'Antuono Domenico [9.4%] | 5h | 5h | 200 | 200 | 200 |
| 42 | 1.4.2 | Model | 6d | 2021-12-23 A | 2021-12-30 A |  | 100% | 2021-12-23 | 2022-01-05 | 10d | 2021-12-23 | 2022-01-05 |  | Bonavita Vincenzo [11.6%]; D'Antuono Domenico [11.6%]; Palladino Antonio Salvatore [14.5%]; Viglione Maddalena [10.9%] | 15h | 15h | 600 | 800 | 600 |
| 43 | 1.4.3 | Controller | 10d | 2021-12-23 A | 2022-01-05 A |  | 100% | 2021-12-23 | 2022-01-05 | 10d | 2021-12-23 | 2022-01-05 |  | Bonavita Vincenzo [9.4%]; D'Antuono Domenico [9.4%]; Palladino Antonio Salvatore [9.4%]; Viglione Maddalena [9.4%] | 30h | 30h | 1,200 | 1,200 | 1,200 |
| 44 | 1.4.4 | View | 10d | 2021-12-23 A | 2022-01-05 A |  | 100% | 2021-12-23 | 2022-01-05 | 10d | 2021-12-23 | 2022-01-05 |  | Bonavita Vincenzo [7.5%]; D'Antuono Domenico [7.5%]; Palladino Antonio Salvatore [7.5%]; Viglione Maddalena [7.5%] | 30h | 30h | 1,200 | 1,200 | 1,200 |
| 45 | 1.5 | **Testing** | 33d | 2021-12-07 A | 2022-01-20 A |  | 100% | 2021-12-07 | 2022-01-20 | 33d | 2021-12-07 | 2022-01-20 |  |  | 70h | 70h | 3,200 | 2,840 | 3,200 |
| 46 | 1.5.1 | Test Case Specification | 15d | 2021-12-07 A | 2021-12-27 A | 2 | 100% | 2021-12-07 | 2021-12-27 | 15d | 2021-12-07 | 2021-12-27 | finish no earlier than 2021-12-27 | Bonavita Vincenzo [2.5%]; D'Antuono Domenico [2.5%]; Palladino Antonio Salvatore [6.7%]; Viglione Maddalena [2.5%]; Vona Livio [2.5%] | 15h | 15h | 600 | 600 | 600 |
| 47 | 1.5.2 | Test Unità | 7d | 2022-01-06 A | 2022-01-14 A | 40 | 100% | 2022-01-06 | 2022-01-14 | 7d | 2022-01-06 | 2022-01-14 |  | Bonavita Vincenzo [3.9%]; D'Antuono Domenico [5.3%]; Palladino Antonio Salvatore [5.3%]; Viglione Maddalena [5.3%] | 15h | 15h | 680 | 600 | 680 |
| 48 | 1.5.3 | Test Integrazione | 7d | 2022-01-06 A | 2022-01-14 A | 40 | 100% | 2022-01-06 | 2022-01-14 | 7d | 2022-01-06 | 2022-01-14 |  | Bonavita Vincenzo [3.1%]; D'Antuono Domenico [3.1%]; Palladino Antonio Salvatore [3.1%]; Viglione Maddalena [3.1%] | 15h | 15h | 760 | 600 | 760 |
| 49 | 1.5.4 | Test Sistema | 7d | 2022-01-06 A | 2022-01-14 A | 40 | 100% | 2022-01-06 | 2022-01-14 | 7d | 2022-01-06 | 2022-01-14 |  | Bonavita Vincenzo [3.1%]; D'Antuono Domenico [3.1%]; Palladino Antonio Salvatore [3.1%]; Viglione Maddalena [3.1%] | 15h | 15h | 760 | 600 | 760 |
| 50 | 1.5.5 | Test Execution Report | 2d | 2022-01-17 A | 2022-01-18 A | 47, 48, 49 | 100% | 2022-01-17 | 2022-01-20 | 4d | 2022-01-17 | 2022-01-20 |  | Viglione Maddalena [12.5%]; D'Antuono Domenico | 4h | 4h | 160 | 200 | 160 |
| 51 | 1.5.6 | Test Summary Report | 4d | 2022-01-17 A | 2022-01-20 A | 47, 48, 49 | 100% | 2022-01-17 | 2022-01-20 | 4d | 2022-01-17 | 2022-01-20 |  | Bonavita Vincenzo [1.9%]; D'Antuono Domenico [1.9%]; Palladino Antonio Salvatore [1.9%]; Viglione Maddalena [1.9%] | 3h | 3h | 120 | 120 | 120 |
| 52 | 1.5.7 | Test Incident Report | 4d | 2022-01-17 A | 2022-01-20 A | 47, 48, 49 | 100% | 2022-01-17 | 2022-01-20 | 4d | 2022-01-17 | 2022-01-20 |  | Bonavita Vincenzo [1.9%]; D'Antuono Domenico [1.9%]; Palladino Antonio Salvatore [1.9%]; Viglione Maddalena [1.9%] | 3h | 3h | 120 | 120 | 120 |
| 53 | 1.6 | **Manuali** | 1d | 2022-01-21 A | 2022-01-21 A | 45 | 100% | 2022-01-21 | 2022-01-21 | 1d | 2022-01-21 | 2022-01-21 |  |  | 5h | 5h | 200 | 200 | 200 |
| 54 | 1.6.1 | Manuale Utente | 1d | 2022-01-21 A | 2022-01-21 A |  | 100% | 2022-01-21 | 2022-01-21 | 1d | 2022-01-21 | 2022-01-21 |  | Bonavita Vincenzo [5%]; D'Antuono Domenico [5%]; Palladino Antonio Salvatore [5%]; Viglione Maddalena [5%] | 2h | 2h | 80 | 80 | 80 |
| 55 | 1.6.2 | Manuale Installazione | 1d | 2022-01-21 A | 2022-01-21 A |  | 100% | 2022-01-21 | 2022-01-21 | 1d | 2022-01-21 | 2022-01-21 |  | Bonavita Vincenzo [7.5%]; D'Antuono Domenico [7.5%]; Palladino Antonio Salvatore [7.5%]; Viglione Maddalena [7.5%] | 3h | 3h | 120 | 120 | 120 |
